# 一体化、三平台大经营AI智能管理系统

How a schedule from a web Gantt chart changed from version to version. A marks actual dates.

## Version 1 (saved 2026-04-29)

| ID | WBS | Task | Duration | Start | Finish | Complete |
| --- | --- | --- | --- | --- | --- | --- |
| 2 | 1 | **项目启动** | 42d | 2026-01-01 | 2026-02-27 | 100% |
| 3 |  | 项目启动 | 14d | 2026-01-01 | 2026-01-20 | 100% |
| 4 |  | 组建项目团队 | 28d | 2026-01-21 | 2026-02-27 | 100% |
| 5 | 2 | **需求分析** | 62d | 2026-02-02 | 2026-04-28 | 93% |
| 6 | 2.1 | **功能分析** | 46d | 2026-02-02 | 2026-04-06 | 100% |
| 7 |  | 大经营管理系统 | 29d | 2026-02-02 | 2026-03-12 | 100% |
| 8 |  | 一体化决策组织平台 | 16d | 2026-03-09 | 2026-03-30 | 100% |
| 9 |  | 规范化协作机制平台 | 21d | 2026-03-09 | 2026-04-06 | 100% |
| 10 |  | 模块化管理指标平台 | 21d | 2026-03-09 | 2026-04-06 | 100% |
| 11 |  | 通用功能 | 16d | 2026-03-09 | 2026-03-30 | 100% |
| 12 |  | 移动端APP | 16d | 2026-03-09 | 2026-03-30 | 100% |
| 13 | 2.2 | **文档编制** | 42d | 2026-03-02 | 2026-04-28 | 82% |
| 14 |  | 需求规格说明书编制 | 21d | 2026-03-02 | 2026-03-30 | 100% |
| 15 |  | 概要设计说明书编制 | 22d | 2026-03-10 | 2026-04-08 | 65% |
| 16 |  | 需求评审 | 1d | 2026-03-31 | 2026-03-31 | 100% |
| 17 | 2.4 | **文档修订** | 3d | 2026-04-06 | 2026-04-08 | 35% |
| 18 |  | 需求规格说明书修订 | 3d | 2026-04-06 | 2026-04-08 | 70% |
| 19 |  | 相关文档修订 | 3d | 2026-04-06 | 2026-04-08 |  |
| 20 | 3 | **产品设计** | 68d | 2026-01-01 | 2026-04-06 | 75% |
| 21 |  | 架构设计 | 6d | 2026-02-26 | 2026-03-05 | 100% |
| 22 | 3.2 | **原型设计** | 42d | 2026-02-02 | 2026-03-31 | 81% |
| 23 |  | 大经营管理系统 | 27d | 2026-02-02 | 2026-03-10 | 100% |
| 24 |  | 一体化决策组织平台 | 16d | 2026-03-09 | 2026-03-30 | 100% |
| 25 |  | 规范化协作机制平台 | 17d | 2026-03-09 | 2026-03-31 | 70% |
| 26 |  | 模块化管理指标平台 | 17d | 2026-03-09 | 2026-03-31 | 30% |
| 27 |  | 通用功能 | 10d | 2026-03-09 | 2026-03-20 | 90% |
| 28 |  | 移动端APP | 7d | 2026-03-23 | 2026-03-31 | 100% |
| 29 |  | 数据库设计 | 11d | 2026-03-23 | 2026-04-06 | 10% |
| 30 | 4 | **功能研发** | 100d | 2026-03-16 | 2026-07-31 | 6% |
| 31 | 4.1 | **环境准备** | 24d | 2026-03-16 | 2026-04-16 | 61% |
| 32 |  | 研发环境 | 7d | 2026-03-23 | 2026-03-31 | 100% |
| 33 |  | 测试环境 | 12d | 2026-03-16 | 2026-03-31 | 100% |
| 34 |  | 生产环境 | 12d | 2026-03-16 | 2026-03-31 |  |
| 35 |  | 详细设计说明书编制 | 10d | 2026-04-06 | 2026-04-17 |  |
| 36 | 4.3 | **功能研发** | 98d | 2026-03-18 | 2026-07-31 | 3% |
| 37 | 4.3.1 | **大经营管理系统** | 58d | 2026-04-06 | 2026-06-24 |  |
| 38 |  | 驾驶舱 | 16d | 2026-04-06 | 2026-04-27 |  |
| 39 |  | 经营分析 | 20d | 2026-04-28 | 2026-05-25 |  |
| 40 |  | 经营诊断 | 22d | 2026-05-26 | 2026-06-24 |  |
| 41 | 4.3.2 | **一体化决策组织平台** | 17d | 2026-03-18 | 2026-04-09 | 20% |
| 42 |  | 组织结构体系 | 8d | 2026-03-18 | 2026-03-27 | 20% |
| 43 |  | 人员 | 9d | 2026-03-30 | 2026-04-09 | 20% |
| 44 | 4.3.3 | **规范化协作机制平台** | 59d | 2026-04-06 | 2026-06-25 |  |
| 45 |  | 计划会商 | 59d | 2026-04-06 | 2026-06-25 |  |
| 46 |  | 策略执行 | 59d | 2026-04-06 | 2026-06-25 |  |
| 47 |  | 过程管控 | 59d | 2026-04-06 | 2026-06-25 |  |
| 48 |  | 评价考核 | 59d | 2026-04-06 | 2026-06-25 |  |
| 49 | 4.3.4 | **模块化管理指标平台** | 65d | 2026-03-26 | 2026-06-24 | 2% |
| 50 |  | 数据获取 | 65d | 2026-03-26 | 2026-06-24 |  |
| 51 |  | 指标库 | 65d | 2026-03-26 | 2026-06-24 |  |
| 52 |  | 指标共享底座 | 65d | 2026-03-26 | 2026-06-24 |  |
| 53 |  | 数据管理 | 25d | 2026-03-26 | 2026-04-29 |  |
| 54 |  | 数据应用 | 40d | 2026-04-30 | 2026-06-24 | 15% |
| 55 | 4.3.5 | **通用功能** | 9d | 2026-03-25 | 2026-04-06 | 100% |
| 56 |  | 流程管控 | 4d | 2026-03-25 | 2026-03-30 | 100% |
| 57 |  | 权限管理 | 5d | 2026-03-31 | 2026-04-06 | 100% |
| 58 | 4.3.6 | **移动端APP** | 25d | 2026-06-29 | 2026-07-31 |  |
| 59 |  | 电量管理 | 8d | 2026-06-29 | 2026-07-08 |  |
| 60 |  | 市场交易 | 9d | 2026-07-09 | 2026-07-21 |  |
| 61 |  | 行业对标 | 8d | 2026-07-22 | 2026-07-31 |  |
| 62 | 5 | **测试** | 92d | 2026-05-07 | 2026-09-11 |  |
| 63 | 5.1 | **系统测试** | 82d | 2026-05-07 | 2026-08-28 |  |
| 64 |  | 功能测试 | 78d | 2026-05-07 | 2026-08-24 |  |
| 65 |  | 性能测试 | 15d | 2026-07-20 | 2026-08-07 |  |
| 66 |  | 集成测试 | 15d | 2026-07-27 | 2026-08-14 |  |
| 67 |  | 安全测试 | 10d | 2026-08-17 | 2026-08-28 |  |
| 68 |  | UAT验收测试 | 6d | 2026-08-31 | 2026-09-07 |  |
| 69 |  | 验收报告 | 4d | 2026-09-08 | 2026-09-11 |  |
| 70 | 6 | **上线试运行** | 23d | 2026-08-24 | 2026-09-23 |  |
| 71 |  | 试运行 | 23d | 2026-08-24 | 2026-09-23 |  |

| ID | WBS | Task | Duration | Start | Finish |
| --- | --- | --- | --- | --- | --- |
| 72 |  | 用户培训 | 10d | 2026-08-24 | 2026-09-04 |
| 73 | 7 | **项目验收** | 18d | 2026-09-07 | 2026-09-30 |
| 74 |  | 验收材料准备 | 8d | 2026-09-07 | 2026-09-16 |
| 75 |  | 项目验收评审 | 10d | 2026-09-17 | 2026-09-30 |

## Version 2 (saved 2026-04-29)

Last finish stays 2026-09-30. Complete tasks 18 → 17.

Added:

| ID | Task | Duration | Start | Finish |
| --- | --- | --- | --- | --- |
| 16 | **内外部接口需求分析** | 44d | 2026-02-27 | 2026-04-29 |
| 17 | 4A（登录认证） | 20d | 2026-04-01 | 2026-04-28 |
| 18 | MDM（组织/人员） | 44d | 2026-02-27 | 2026-04-29 |
| 19 | 国家能源集团数据中心 | 44d | 2026-02-27 | 2026-04-29 |
| 20 | 山西省电力交易中心系统 | 1d | 2026-02-27 | 2026-02-27 |

Removed: 16 需求评审

Changed:

| ID | Task | Finish | Duration | Complete |
| --- | --- | --- | --- | --- |
| 5 | **需求分析** | 2026-04-28 → 2026-04-29 (+1d) | 62d → 63d | 93% → 68% |

## Version 3 (saved 2026-04-30)

Last finish stays 2026-09-30.

Added:

| ID | Task | Duration | Start | Finish |
| --- | --- | --- | --- | --- |
| 59 | 智能报表 | 30d | 2026-04-20 | 2026-05-29 |
| 60 | 智能报告 | 50d | 2026-04-06 | 2026-06-12 |
| 61 | 智能问数 | 50d | 2026-04-06 | 2026-06-12 |
| 62 | 数据可视化面板 | 50d | 2026-04-06 | 2026-06-12 |

Changed:

| ID | Task | Start | Finish | Duration | Complete |
| --- | --- | --- | --- | --- | --- |
| 5 | **需求分析** |  | 2026-04-29 → 2026-04-30 (+1d) | 63d → 64d | 68% → 59% |
| 16 | **内外部接口需求分析** |  | 2026-04-29 → 2026-04-30 (+1d) | 44d → 45d | 29% → 21% |
| 20 | 山西省电力交易中心系统 |  | 2026-02-27 → 2026-04-30 (+62d) | 1d → 45d |  |
| 34 | **功能研发** |  |  |  | 6% → 4% |
| 40 | **功能研发** |  |  |  | 3% → 2% |
| 53 | **模块化管理指标平台** |  |  |  | 2% → 0% |
| 58 | **数据应用** | 2026-04-30 → 2026-04-06 (-24d) | 2026-06-24 → 2026-06-12 (-12d) | 40d → 50d | 15% → 0% |
